# Project Gantt Chart V1.2

Schedule from MS Project, 2016-07-11 to 2016-11-16, A marks actual dates.

## Calendars

- Standard: Mon-Fri 08:00-12:00, 13:00-17:00; Sat-Sun off.

## Resources

| Resource |
| --- |
| Changming Wu |
| Hardik Kansara |
| Kwinno Pineda |
| Patrick Cura |
| Steve McKinlay |
| Robert Sutcliffe |

## Schedule

| ID | WBS | Task | Type | Duration | Start | Finish | Predecessors | Remaining | Baseline start | Baseline finish | Baseline duration | Total slack | Free slack | Constraint | Resources | Work | Actual work |
| --- | --- | --- | --- | --- | --- | --- | --- | --- | --- | --- | --- | --- | --- | --- | --- | --- | --- |
| 1 | 1 | **Pre-project, Feasibility and Foundation** |  | 18d | 2016-07-11 | 2016-08-03 |  |  | 2016-07-11 | 2016-08-05 | 20d | 18d |  |  |  | 696h |  |
| 2 | 1.1 | Initial Plan |  | 2d | 2016-07-11 | 2016-07-12 |  |  | 2016-07-11 | 2016-07-12 | 2d | 86d | 0d |  | Changming Wu; Hardik Kansara; Kwinno Pineda; Patrick Cura | 64h |  |
| 3 | 1.2 | Project Proposal |  | 3d | 2016-07-13 | 2016-07-15 | 2 |  | 2016-07-13 | 2016-07-15 | 3d | 86d | 0d |  | Changming Wu; Kwinno Pineda; Patrick Cura; Hardik Kansara | 96h |  |
| 4 | 1.3 | Scope of Project |  | 1d | 2016-07-13 | 2016-07-13 | 2 |  | 2016-07-13 | 2016-07-13 | 0.5d | 88d | 0d |  | Changming Wu; Hardik Kansara; Patrick Cura; Kwinno Pineda | 32h |  |
| 5 | 1.4 | Requirements Analysis |  | 2d | 2016-07-14 | 2016-07-15 | 4 |  | 2016-07-14 | 2016-07-15 | 1.5d | 88d |  | start no earlier than 2016-07-14 | Changming Wu; Hardik Kansara; Kwinno Pineda; Patrick Cura | 64h |  |
| 6 | 1.5 | Research Methodology |  | 3d | 2016-07-18 | 2016-07-20 |  |  | 2016-07-18 | 2016-07-20 | 3d | 83d | 0d | start no earlier than 2016-07-18 | Changming Wu; Kwinno Pineda; Hardik Kansara; Patrick Cura | 96h |  |
| 7 | 1.6 | Select Methodology |  | 2d | 2016-07-21 | 2016-07-22 | 6 |  | 2016-07-21 | 2016-07-21 | 0.5d | 83d |  |  | Changming Wu; Hardik Kansara; Kwinno Pineda; Patrick Cura | 64h |  |
| 8 | 1.7 | Project Gantt Chart |  | 8h | 2016-07-18 | 2016-07-18 | 3 |  | 2016-07-18 | 2016-07-18 | 4h | 86d | 0d |  | Changming Wu; Hardik Kansara; Kwinno Pineda; Patrick Cura | 32h |  |
| 9 | 1.8 | Meet Project Advisor |  | 8h | 2016-07-19 | 2016-07-19 | 8 |  | 2016-07-18 | 2016-07-18 | 1h | 86d |  |  | Steve McKinlay; Changming Wu; Hardik Kansara; Kwinno Pineda; Patrick Cura | 40h |  |
| 10 | 1.9 | Meet Co-ordinator |  | 8h | 2016-07-11 | 2016-07-11 |  |  | 2016-07-11 | 2016-07-11 | 1h | 92d |  |  | Robert Sutcliffe; Changming Wu; Hardik Kansara; Kwinno Pineda; Patrick Cura | 40h |  |
| 11 | 1.10 | Complete Project Proposal | milestone | 1d | 2016-07-11 | 2016-07-11 |  |  | 2016-07-11 | 2016-07-11 | 1d | 92d |  |  | Changming Wu; Hardik Kansara | 16h |  |
| 12 | 1.11 | Complete Gantt Chart | milestone | 1d | 2016-07-11 | 2016-07-11 |  |  | 2016-07-11 | 2016-07-11 | 1d | 18d | 14d |  | Changming Wu; Hardik Kansara; Kwinno Pineda; Patrick Cura | 32h |  |
| 13 | 1.12 | **Analysis and Design Documents** |  | 3d | 2016-08-01 | 2016-08-03 |  |  | 2016-08-01 | 2016-08-05 | 5d | 4d |  |  |  | 120h |  |
| 14 | 1.12.1 | Website Analysis and Design Document |  | 3d | 2016-08-01 | 2016-08-03 | 12 |  | 2016-08-01 | 2016-08-05 | 5d | 70d | 2d | start no earlier than 2016-08-01 | Kwinno Pineda; Hardik Kansara | 48h |  |
| 15 | 1.12.2 | Client Application Analysis and Design Document |  | 3d | 2016-08-01 | 2016-08-03 | 12 |  | 2016-08-01 | 2016-08-05 | 5d | 4d | 2d | start no earlier than 2016-08-01 | Hardik Kansara; Kwinno Pineda | 48h |  |
| 16 | 1.12.3 | Database Evaluator Analysis and Design Document |  | 3d | 2016-08-01 | 2016-08-03 | 12 |  | 2016-08-01 | 2016-08-05 | 5d | 75d |  | start no earlier than 2016-08-01 | Hardik Kansara | 24h |  |
| 17 | 2 | **Exploration Phase and Engineering Phase** |  | 24d | 2016-08-08 A | 2016-09-08 |  | 24d | 2016-08-08 | 2016-09-23 | 45d |  |  |  |  | 3384h | 160h |
| 18 | 2.1 | **Exploration Phase** |  | 20d | 2016-08-08 | 2016-09-02 |  |  | 2016-08-08 | 2016-09-02 | 20d |  |  |  |  | 800h |  |
| 19 | 2.1.1 | **Iteration One** |  | 5d | 2016-08-08 | 2016-08-12 |  |  | 2016-08-08 | 2016-08-13 | 5d |  |  |  |  | 160h |  |
| 20 | 2.1.1.1 | Website: Plan Website and Choose Wordpress Template |  | 5d | 2016-08-08 | 2016-08-12 | 14 |  | 2016-08-08 | 2016-08-12 | 5d | 68d |  | finish no earlier than 2016-08-12 | Kwinno Pineda | 40h |  |
| 21 | 2.1.1.2 | Submit Test Report Iteration One (Website) | manual | 1d | 2016-08-13 | 2016-08-13 |  |  | 2016-08-13 | 2016-08-13 | 1d |  |  |  | Kwinno Pineda | 8h |  |
| 22 | 2.1.1.3 | .exe App: Client Application Design |  | 3d | 2016-08-08 | 2016-08-10 | 15 |  | 2016-08-08 | 2016-08-12 | 5d | 2d |  |  | Hardik Kansara; Patrick Cura | 48h |  |
| 23 | 2.1.1.4 | Submit Test Report Iteration One(.exe App) | manual | 4d | 2016-08-13 | 2016-08-17 |  |  | 2016-08-13 | 2016-08-13 | 1d |  |  |  | Hardik Kansara; Patrick Cura | 64h |  |
| 24 | 2.1.2 | **Iteration Two** |  | 10d | 2016-08-15 | 2016-08-26 |  |  | 2016-08-15 | 2016-08-27 | 10d |  |  |  |  | 344h |  |
| 25 | 2.1.2.1 | Website: Program the Register Form | manual | 7d | 2016-08-21 | 2016-08-27 |  |  | 2016-08-15 | 2016-08-17 | 3d |  |  |  | Kwinno Pineda | 56h |  |
| 26 | 2.1.2.2 | Website: Program the Login Form | manual | 7d | 2016-08-21 | 2016-08-27 |  |  | 2016-08-18 | 2016-08-22 | 3d |  |  |  | Kwinno Pineda | 56h |  |
| 27 | 2.1.2.3 | Website: Verification of the Customer Email Address | manual | 2d | 2016-08-27 | 2016-08-29 |  |  | 2016-08-23 | 2016-08-25 | 3d |  |  |  | Kwinno Pineda | 16h |  |
| 28 | 2.1.2.4 | Website: Basic Account User Page | manual | 2d | 2016-08-29 | 2016-08-30 |  |  | 2016-08-26 | 2016-08-26 | 1d |  |  |  | Kwinno Pineda | 16h |  |
| 29 | 2.1.2.5 | Submit Test Report Iteration Two (Website) | manual | 1d | 2016-08-31 | 2016-08-31 |  |  | 2016-08-27 | 2016-08-27 | 1d |  |  |  | Kwinno Pineda | 8h |  |
| 30 | 2.1.2.6 | .exe App: Create Virtual SQL Server Test | manual | 2d | 2016-08-18 | 2016-08-19 |  |  | 2016-08-15 | 2016-08-19 | 5d |  |  |  | Hardik Kansara; Patrick Cura | 32h |  |
| 31 | 2.1.2.7 | .exe App: Basic GUI Design Unit and Test | manual | 2d | 2016-08-18 | 2016-08-19 |  |  | 2016-08-15 | 2016-08-19 | 5d |  |  |  | Hardik Kansara; Patrick Cura | 32h |  |
| 32 | 2.1.2.8 | .exe App: Create Virtual SQL Server Test | manual | 3d | 2016-08-24 | 2016-08-26 |  |  | 2016-08-22 | 2016-08-26 | 5d |  |  |  | Hardik Kansara; Patrick Cura | 48h |  |
| 33 | 2.1.2.9 | .exe App: Basic Saving of Dump file with Test | manual | 1d | 2016-08-25 | 2016-08-25 |  |  | 2016-08-22 | 2016-08-26 | 5d |  |  |  | Hardik Kansara; Patrick Cura | 16h |  |
| 34 | 2.1.2.10 | Submit Test Report Iteration Two (.exe App) | manual | 4d | 2016-08-24 | 2016-08-27 |  |  | 2016-08-27 | 2016-08-27 | 1d |  |  |  | Hardik Kansara; Patrick Cura | 64h |  |

Notes:
- 1: This is a summary task. Use summary tasks to help organize your project into sections.
- 8: This is a milestone task. Set a task to 0d duration to mark an event in your project.

| ID | WBS | Task | Type | Duration | Start | Finish | Predecessors | Baseline start | Baseline finish | Baseline duration | Total slack | Constraint | Resources | Work |
| --- | --- | --- | --- | --- | --- | --- | --- | --- | --- | --- | --- | --- | --- | --- |
| 35 | 2.1.3 | **Iteration Three** |  | 5d | 2016-08-29 | 2016-09-02 |  | 2016-08-29 | 2016-09-03 | 5d |  |  |  | 296h |
| 36 | 2.1.3.1 | Website: Download of the .exe App from the Website |  | 2d | 2016-08-29 | 2016-08-30 | 14 | 2016-08-29 | 2016-08-30 | 2d | 56d | start no earlier than 2016-08-29 | Hardik Kansara; Patrick Cura | 32h |
| 37 | 2.1.3.2 | Website: Create Basic Contact Us Page with Forms | manual | 3d | 2016-09-05 | 2016-09-07 |  | 2016-08-31 | 2016-09-02 | 3d |  |  | Kwinno Pineda | 24h |
| 38 | 2.1.3.3 | Submit Test Report Iteration Three (Website) | manual | 1d | 2016-09-08 | 2016-09-08 | 22 | 2016-09-03 | 2016-09-03 | 1d |  | start no earlier than 2016-09-03 | Kwinno Pineda | 8h |
| 39 | 2.1.3.4 | .exe App: Install Different version of SQL Server | manual | 2d | 2016-09-05 | 2016-09-06 |  | 2016-08-29 | 2016-09-02 | 5d |  |  | Kwinno Pineda; Patrick Cura | 32h |
| 40 | 2.1.3.5 | .exe App: Completely Working GUI | manual | 4d | 2016-08-29 | 2016-09-01 |  | 2016-08-29 | 2016-09-02 | 5d |  |  | Kwinno Pineda; Patrick Cura | 64h |
| 41 | 2.1.3.6 | .exe App: Dump file Saving with Testing | manual | 4d | 2016-08-30 | 2016-09-02 |  | 2016-08-29 | 2016-09-02 | 5d |  |  | Kwinno Pineda; Patrick Cura | 64h |
| 42 | 2.1.3.7 | .exe App: Encrypted Dumpfile with Testing | manual | 4d | 2016-08-31 | 2016-09-03 |  | 2016-08-29 | 2016-09-02 | 5d |  |  | Kwinno Pineda; Patrick Cura | 64h |
| 43 | 2.1.3.8 | Submit Test Report Iteration Three (exe. App) | manual | 1d | 2016-09-03 | 2016-09-03 |  | 2016-09-03 | 2016-09-03 | 1d |  |  | Patrick Cura | 8h |
| 44 | 2.2 | **Engineering Phase** |  | 25d | 2016-09-05 | 2016-10-09 |  | 2016-09-05 | 2016-09-23 | 15d | 0d |  |  | 704h |
| 45 | 2.2.1 | **Iteration One** |  | 5d | 2016-09-05 | 2016-09-09 |  | 2016-09-05 | 2016-09-10 | 5d |  |  |  | 88h |
| 46 | 2.2.1.1 | Website: Upload of Customer Parameters or PDF to Website | manual | 2d | 2016-09-07 | 2016-09-08 |  | 2016-09-05 | 2016-09-06 | 2d |  |  | Kwinno Pineda | 16h |
| 47 | 2.2.1.2 | Website: Forgot Password Function Page | manual | 2d | 2016-09-09 | 2016-09-10 |  | 2016-09-07 | 2016-09-09 | 3d |  |  | Kwinno Pineda | 16h |
| 48 | 2.2.1.3 | Submit Test Report Iteration One (Website) | manual | 1d | 2016-09-11 | 2016-09-11 |  | 2016-09-10 | 2016-09-10 | 1d |  |  | Kwinno Pineda | 8h |
| 49 | 2.2.1.4 | .exe App: Database Evaluator Basic GUI Design with Unit Testing | manual | 5d | 2016-09-05 | 2016-09-09 |  | 2016-09-05 | 2016-09-09 | 5d |  |  | Patrick Cura | 40h |
| 50 | 2.2.1.5 | Submit Test Report Iteration One (.exe App) | manual | 1d | 2016-09-10 | 2016-09-10 |  | 2016-09-10 | 2016-09-10 | 1d |  |  | Patrick Cura | 8h |
| 51 | 2.2.2 | **Iteration Two** |  | 20d | 2016-09-12 | 2016-10-09 |  | 2016-09-12 | 2016-09-16 | 5d | 0d |  |  | 368h |
| 52 | 2.2.2.1 | Website: Create Documentation Page | manual | 1d | 2016-09-12 | 2016-09-12 |  | 2016-09-12 | 2016-09-12 | 1d |  |  | Kwinno Pineda | 8h |
| 53 | 2.2.2.2 | Website: Design All the Pages of the Website and Create all the Images needed | manual | 7d | 2016-09-18 | 2016-09-25 |  | 2016-09-13 | 2016-09-15 | 3d |  |  | Kwinno Pineda | 56h |
| 54 | 2.2.2.3 | Website: Add Plugins and Review all links | manual | 1d | 2016-09-14 | 2016-09-14 |  | 2016-09-16 | 2016-09-16 | 1d |  |  | Kwinno Pineda | 8h |
| 55 | 2.2.2.4 | Submit Test Report Iteration Two (Website) | manual | 1d | 2016-10-09 | 2016-10-09 |  | 2016-09-17 | 2016-09-17 | 1d |  |  | Kwinno Pineda | 8h |
| 56 | 2.2.2.5 | .exe App: Database Evaluator Basic Generator of PDF Report with Unit Testing | manual | 6d | 2016-09-12 | 2016-09-17 |  | 2016-09-12 | 2016-09-16 | 5d |  |  | Hardik Kansara; Patrick Cura | 96h |
| 57 | 2.2.2.6 | Submit Test Report Iteration Two (.exe App) | manual | 12d | 2016-09-18 | 2016-10-01 |  | 2016-09-17 | 2016-09-17 | 1d |  |  | Hardik Kansara; Patrick Cura | 192h |
| 58 | 2.2.3 | **Iteration Three** |  | 15d | 2016-09-19 | 2016-10-09 |  | 2016-09-19 | 2016-09-23 | 10d | 0d |  |  | 248h |
| 59 | 2.2.3.1 | Website: Notification Email for Customer and Developer | manual | 1d | 2016-09-22 | 2016-09-22 | 38 | 2016-09-19 | 2016-09-20 | 2d |  | start no earlier than 2016-09-19 | Kwinno Pineda | 8h |
| 60 | 2.2.3.2 | Website: Upload the Website Online and Test all function if working | manual | 8d | 2016-09-29 | 2016-10-09 |  | 2016-09-21 | 2016-09-23 | 3d |  |  | Kwinno Pineda; Patrick Cura | 128h |
| 61 | 2.2.3.3 | Submit Test Report Iteration Three (Website) | manual | 1d | 2016-10-09 | 2016-10-09 |  | 2016-09-24 | 2016-09-24 | 1d |  |  | Kwinno Pineda; Patrick Cura | 16h |
| 62 | 2.2.3.4 | .exe App: Database Evaluator + Client Application Working Properly | manual | 5d | 2016-09-19 | 2016-09-23 |  | 2016-09-19 | 2016-09-23 | 5d |  |  | Hardik Kansara; Patrick Cura | 80h |
| 63 | 2.2.3.5 | Submit Test Report Iteration Three (.exe App) | manual | 1d | 2016-09-24 | 2016-09-24 |  | 2016-09-24 | 2016-09-24 | 1d |  |  | Hardik Kansara; Patrick Cura | 16h |

| ID | WBS | Task | Type | Duration | Start | Finish | Predecessors | Remaining | Actual start | Baseline start | Baseline finish | Baseline duration | Total slack | Free slack | Constraint | Resources | Work | Actual work |
| --- | --- | --- | --- | --- | --- | --- | --- | --- | --- | --- | --- | --- | --- | --- | --- | --- | --- | --- |
| 64 | 2.3 | **Deployment** |  | 13d | 2016-09-21 A | 2016-10-09 |  | 13d |  | 2016-09-26 | 2016-10-09 | 17d | 0d |  |  |  | 984h | 160h |
| 65 | 2.3.1 | Combine Website, Client Application and Database Evaluator | manual | 5d | 2016-09-26 | 2016-09-30 | 59 |  |  | 2016-09-26 | 2016-09-30 | 5d |  |  | finish no earlier than 2016-09-30 | Hardik Kansara; Kwinno Pineda; Patrick Cura | 120h |  |
| 66 | 2.3.2 | **System Test** |  | 5d | 2016-09-26 | 2016-09-30 |  | 5d | 2016-09-21 | 2016-09-26 | 2016-09-30 | 5d |  |  |  |  | 864h | 160h |
| 67 | 2.3.2.1 | Test Plan for System Test |  | 4d | 2016-09-27 | 2016-09-30 | 38 |  |  | 2016-09-26 | 2016-09-30 | 5d | -4d | 0d | finish no earlier than 2016-09-30 | Changming Wu; Hardik Kansara; Kwinno Pineda; Patrick Cura | 128h |  |
| 68 | 2.3.2.2 | Test Case for System Test | manual | 4d | 2016-09-21 | 2016-09-24 | 67 |  |  | 2016-09-26 | 2016-09-30 | 5d |  |  |  | Changming Wu; Hardik Kansara; Kwinno Pineda; Patrick Cura | 128h |  |
| 69 | 2.3.2.3 | **Perform and record test results for System Test** |  | 5d | 2016-09-26 A | 2016-09-30 | 65 | 5d |  | 2016-09-26 | 2016-09-30 | 5d |  |  |  | Changming Wu; Hardik Kansara; Kwinno Pineda; Patrick Cura | 544h | 160h |
| 70 | 2.3.2.3.1 | Iteration One |  | 2d? | 2016-09-26 | 2016-09-27 |  |  |  | 2016-09-26 | 2016-09-27 | 2d | 3d |  |  | Changming Wu; Hardik Kansara; Kwinno Pineda; Patrick Cura | 64h |  |
| 71 | 2.3.2.3.2 | Fix issues for Iteration One |  | 1d? | 2016-09-26 | 2016-09-26 |  |  |  | 2016-09-28 | 2016-09-28 | 1d | 4d |  |  | Changming Wu; Hardik Kansara; Kwinno Pineda; Patrick Cura | 32h |  |
| 72 | 2.3.2.3.3 | Iteration Two |  | 2d? | 2016-09-26 | 2016-09-27 |  |  |  | 2016-09-29 | 2016-09-30 | 2d | 3d |  |  | Changming Wu; Hardik Kansara; Kwinno Pineda; Patrick Cura | 64h |  |
| 73 | 2.3.2.3.4 | Fix issues for Iteration Two |  | 1d? | 2016-09-26 | 2016-09-26 |  |  |  | 2016-09-30 | 2016-09-30 | 1d | 4d |  |  | Changming Wu; Hardik Kansara; Kwinno Pineda; Patrick Cura | 32h |  |
| 74 | 2.3.2.3.5 | Iteration Three |  | 1d? | 2016-09-26 | 2016-09-26 |  |  |  | 2016-10-01 | 2016-10-03 | 3d | 4d |  |  | Changming Wu; Hardik Kansara; Kwinno Pineda; Patrick Cura | 32h |  |
| 75 | 2.3.2.3.6 | Fix issues for Iteration Three |  | 1d? | 2016-09-26 | 2016-09-26 |  |  |  | 2016-10-04 | 2016-10-04 | 1d | 4d |  |  | Changming Wu; Hardik Kansara; Kwinno Pineda; Patrick Cura | 32h |  |
| 76 | 2.3.2.3.7 | Iteration four | manual | 2d? | 2016-10-05 | 2016-10-06 |  |  |  | 2016-10-05 | 2016-10-06 | 2d |  |  |  | Changming Wu; Hardik Kansara; Kwinno Pineda; Patrick Cura | 64h |  |
| 77 | 2.3.2.3.8 | Fix issues for Iteration Four | manual | 2d? | 2016-10-07 | 2016-10-08 |  |  |  | 2016-10-07 | 2016-10-08 | 2d |  |  |  | Changming Wu; Hardik Kansara; Kwinno Pineda; Patrick Cura | 64h |  |
| 78 | 2.3.2.4 | Create System report | manual | 1d | 2016-10-09 | 2016-10-09 |  |  |  | 2016-10-09 | 2016-10-09 | 1d |  |  |  | Changming Wu; Hardik Kansara; Kwinno Pineda; Patrick Cura | 32h |  |
| 79 | 2.3.2.5 | Check all the Phases If all Requirements were Delivered | manual | 1d | 2016-10-09 | 2016-10-09 |  |  |  | 2016-10-09 | 2016-10-09 | 1d |  |  |  | Changming Wu; Hardik Kansara; Kwinno Pineda; Patrick Cura | 32h |  |
| 80 | 2.4 | **Post Project** |  | 5d | 2016-10-03 | 2016-10-07 |  |  |  | 2016-10-10 | 2016-10-16 | 5d |  |  |  |  | 896h |  |
| 81 | 2.4.1 | Review Project |  | 5d | 2016-10-03 | 2016-10-07 | 69 |  |  | 2016-10-10 | 2016-10-16 | 5d | 0d |  |  | Changming Wu; Hardik Kansara; Kwinno Pineda; Patrick Cura | 160h |  |
| 82 | 2.4.2 | Create Close out Report | manual | 6d | 2016-10-10 | 2016-10-16 |  |  |  | 2016-10-10 | 2016-10-16 | 5d |  |  |  | Changming Wu; Hardik Kansara; Kwinno Pineda; Patrick Cura | 192h |  |
| 83 | 2.4.3 | Create Implementation Support Document | manual | 6d | 2016-10-10 | 2016-10-16 |  |  |  | 2016-10-10 | 2016-10-16 | 5d |  |  |  | Changming Wu; Hardik Kansara; Kwinno Pineda; Patrick Cura | 192h |  |
| 84 | 2.4.4 | Create Individual Report | manual | 6d | 2016-10-10 | 2016-10-16 |  |  |  | 2016-10-10 | 2016-10-16 | 5d |  |  |  | Changming Wu; Hardik Kansara; Kwinno Pineda; Patrick Cura | 192h |  |
| 85 | 2.4.5 | Collating Documents |  | 5d | 2016-10-03 | 2016-10-07 | 69 |  |  | 2016-10-10 | 2016-10-16 | 5d | 0d |  |  | Changming Wu; Hardik Kansara; Kwinno Pineda; Patrick Cura | 160h |  |
| 86 | 3 | **Project Admin** |  | 68d | 2016-07-11 | 2016-10-12 |  |  |  | 2016-07-11 | 2016-10-12 | 68d |  |  |  |  | 13568h |  |
| 87 | 3.1 | Project Diary | manual | 66d | 2016-07-11 | 2016-10-09 |  |  |  | 2016-07-11 | 2016-10-12 | 68d |  |  | finish no earlier than 2016-10-12 | Changming Wu; Hardik Kansara; Kwinno Pineda; Patrick Cura | 2112h |  |
| 88 | 3.2 | Personal Logs | manual | 70d | 2016-07-11 | 2016-10-14 |  |  |  | 2016-07-11 | 2016-10-12 | 68d |  |  | finish no earlier than 2016-10-12 | Changming Wu; Hardik Kansara; Kwinno Pineda; Patrick Cura | 2240h |  |
| 89 | 3.3 | Collocation: documents | manual | 61d | 2016-07-25 | 2016-10-16 |  |  |  | 2016-07-25 | 2016-10-12 | 58d |  |  | finish no earlier than 2016-10-12 | Changming Wu; Hardik Kansara; Kwinno Pineda; Patrick Cura | 1952h |  |
| 90 | 3.4 | Project Admin : Create Supporting Documents | manual | 66d | 2016-07-11 | 2016-10-09 |  |  |  | 2016-07-11 | 2016-10-12 | 68d? |  |  |  | Changming Wu; Hardik Kansara; Kwinno Pineda; Patrick Cura | 2112h |  |

Notes:
- 87: Tasks with the pushpin next to them are manually scheduled tasks. Use them when you don't want Project to move the task. Also, you can enter freeform text in the duration, start and finish fields or leave them blank if you don't have all the information yet.

| ID | WBS | Task | Type | Duration | Start | Finish | Predecessors | Baseline start | Baseline finish | Baseline duration | Total slack | Constraint | Resources | Work |
| --- | --- | --- | --- | --- | --- | --- | --- | --- | --- | --- | --- | --- | --- | --- |
| 91 | 3.5 | **Meeting** |  | 93d | 2016-07-11 | 2016-11-16 |  | 2016-07-11 | 2016-10-12 | 68d | 0d |  |  | 5072h |
| 92 | 3.5.1 | Frequent Face-to-Face Meeting with Team Members | manual | 71d | 2016-08-10 | 2016-11-16 |  | 2016-07-11 | 2016-10-12 | 68d |  |  | Changming Wu; Hardik Kansara; Kwinno Pineda; Patrick Cura | 2272h |
| 93 | 3.5.2 | Weekly Meeting with Project Advisor | manual | 70d | 2016-07-11 | 2016-10-14 |  | 2016-07-11 | 2016-10-12 | 68d |  |  | Changming Wu; Hardik Kansara; Kwinno Pineda; Patrick Cura; Steve McKinlay | 2800h |
| 94 | 3.6 | **Project Audit** |  | 17d | 2016-08-18 | 2016-09-09 |  | 2016-08-08 | 2016-08-29 | 16d | 0d |  |  | 80h |
| 95 | 3.6.1 | Project Audit 1 | manual | 1d | 2016-08-18 | 2016-08-18 |  | 2016-08-08 | 2016-08-08 | 1d |  | start no earlier than 2016-08-08 | Changming Wu; Hardik Kansara; Kwinno Pineda; Patrick Cura; Robert Sutcliffe | 40h |
| 96 | 3.6.2 | Project Audit 2 | manual | 1d | 2016-09-09 | 2016-09-09 |  | 2016-08-29 | 2016-08-29 | 1d |  | start no earlier than 2016-08-29 | Changming Wu; Hardik Kansara; Kwinno Pineda; Patrick Cura; Robert Sutcliffe | 40h |
| 97 | 4 | **Presentation Preparation** |  | 1d | 2016-10-07 | 2016-10-10 | 85 | 2016-10-07 | 2016-10-10 | 1d | 0d |  | Changming Wu; Hardik Kansara; Kwinno Pineda; Patrick Cura | 64h |
| 98 | 4.1 | Project Presentation | manual | 1d | 2016-10-07 | 2016-10-10 |  |  |  |  |  |  | Changming Wu; Hardik Kansara; Kwinno Pineda; Patrick Cura | 32h |
